# Engineering

Schedule from MS Project, 2004-01-01 to 2006-05-08.

## Calendars

- Standard: Mon-Fri 08:00-12:00, 13:00-17:00; Sat-Sun off.

## Resources

| Resource |
| --- |
| Designer |
| Project engineer |
| Discipline engineer |
| Cost engineer |
| Drafter |
| Scheduler |
| Project sponsor |

## Schedule

| ID | WBS | Task | Type | Duration | Start | Finish | Predecessors | Total slack | Free slack | Resources | Work |
| --- | --- | --- | --- | --- | --- | --- | --- | --- | --- | --- | --- |
| 1 | 1 | **Conceptual** |  | 80d | 2004-01-01 | 2004-04-21 |  | 0d |  |  | 3256h |
| 2 | 1.1 | **Planning and Control** |  | 20d | 2004-01-01 | 2004-01-28 |  | 0d |  |  | 320h |
| 3 | 1.1.1 | Business plan identifying project opportunity |  | 5d | 2004-01-01 | 2004-01-07 |  | 0d |  | Project sponsor | 40h |
| 4 | 1.1.2 | Define project objective and information needs |  | 5d | 2004-01-08 | 2004-01-14 | 3 | 0d |  | Project sponsor | 40h |
| 5 | 1.1.3 | Identify industry standards for project objectives |  | 5d | 2004-01-15 | 2004-01-21 | 4 | 0d |  | Project sponsor; Project engineer | 80h |
| 6 | 1.1.4 | Develop preliminary conceptual schedule and staffing |  | 5d | 2004-01-15 | 2004-01-21 | 4 | 0d |  | Project engineer | 40h |
| 7 | 1.1.5 | Initial planning complete | milestone | 0d | 2004-01-21 | 2004-01-21 | 6 | 0d |  |  |  |
| 8 | 1.1.6 | Develop appropriation strategy |  | 5d | 2004-01-22 | 2004-01-28 | 7 | 40d | 27d | Project sponsor | 40h |
| 9 | 1.1.7 | Develop management model and staff plan |  | 5d | 2004-01-22 | 2004-01-28 | 7 | 50d |  | Project sponsor; Project engineer | 80h |
| 10 | 1.2 | **Site Assessment** |  | 40d | 2004-01-22 | 2004-03-17 |  | 0d |  |  | 864h |
| 11 | 1.2.1 | Identify potential sites |  | 10d | 2004-01-22 | 2004-02-04 | 7 | 0d |  | Project sponsor; Project engineer | 160h |
| 12 | 1.2.2 | Define infrastructure requirements |  | 15d | 2004-02-05 | 2004-02-25 | 21, 11 | 0d |  | Project engineer | 120h |
| 13 | 1.2.3 | Define utility needs |  | 10d | 2004-02-05 | 2004-02-18 | 21, 11 | 5d |  | Project engineer; Discipline engineer | 160h |
| 14 | 1.2.4 | Identify project site |  | 5d | 2004-02-05 | 2004-02-11 | 21, 11 | 10d |  | Project engineer; Discipline engineer | 80h |
| 15 | 1.2.5 | Assess regulatory and environmental impacts |  | 10d | 2004-02-05 | 2004-02-18 | 21, 11 | 2d | 0d | Project engineer; Discipline engineer | 160h |
| 16 | 1.2.6 | Identify permitting requirements |  | 3d | 2004-02-19 | 2004-02-23 | 15 | 2d |  | Project engineer | 24h |
| 17 | 1.2.7 | Recommend site |  | 10d | 2004-02-26 | 2004-03-10 | 15, 12, 13, 14, 16 | 0d |  | Project sponsor; Project engineer | 160h |
| 18 | 1.2.8 | Site and planning review |  | 5d | 2004-03-11 | 2004-03-17 | 17 | 0d |  |  |  |
| 19 | 1.3 | **Scope Definition** |  | 45d | 2004-01-22 | 2004-03-24 |  | 0d |  |  | 616h |
| 20 | 1.3.1 | Develop general scope for project objectives |  | 5d | 2004-01-22 | 2004-01-28 | 4, 5 | 0d |  | Project sponsor; Project engineer | 80h |
| 21 | 1.3.2 | Evaluate project needs, develop major study list |  | 5d | 2004-01-29 | 2004-02-04 | 20 | 0d |  | Project engineer; Discipline engineer | 80h |
| 22 | 1.3.3 | Start major studies |  | 2d | 2004-02-05 | 2004-02-06 | 21 | 8d | 0d | Discipline engineer | 16h |
| 23 | 1.3.4 | Complete major studies and make recommendations |  | 15d | 2004-02-09 | 2004-02-27 | 22 | 8d | 0d | Discipline engineer | 120h |
| 24 | 1.3.5 | Develop specific scope |  | 5d | 2004-03-01 | 2004-03-05 | 23 | 8d | 0d | Project engineer; Discipline engineer | 80h |
| 25 | 1.3.6 | Prepare final conceptual schedule |  | 10d | 2004-03-08 | 2004-03-19 | 8, 24 | 13d |  | Project engineer; Discipline engineer | 160h |
| 26 | 1.3.7 | Provide written scope information |  | 5d | 2004-03-18 | 2004-03-24 | 24, 18 | 10d |  | Project engineer; Discipline engineer | 80h |

Notes:
- 1: Make decision: / Is this project a "go" or "no go"?

| ID | WBS | Task | Type | Duration | Start | Finish | Predecessors | Total slack | Free slack | Resources | Work |
| --- | --- | --- | --- | --- | --- | --- | --- | --- | --- | --- | --- |
| 27 | 1.4 | **Discipline Support** |  | 43d | 2004-02-09 | 2004-04-07 |  | 0d |  |  | 1296h |
| 28 | 1.4.1 | Create deliverables list |  | 6d | 2004-02-09 | 2004-02-16 | 22 | 11d | 0d | Project engineer; Discipline engineer | 96h |
| 29 | 1.4.2 | Start flow sheets and design criteria |  | 5d | 2004-02-17 | 2004-02-23 | 28 | 17d |  | Discipline engineer | 40h |
| 30 | 1.4.3 | Start discipline-specific drawings and equipment list |  | 11d | 2004-02-17 | 2004-03-02 | 28 | 11d |  | Project engineer; Discipline engineer | 176h |
| 31 | 1.4.4 | Start conceptual layout |  | 11d | 2004-02-17 | 2004-03-02 | 28 | 11d |  | Discipline engineer; Project engineer; Drafter | 264h |
| 32 | 1.4.5 | Complete flow sheets and design criteria |  | 15d | 2004-03-18 | 2004-04-07 | 29, 24, 23, 18 | 0d |  | Discipline engineer; Drafter | 240h |
| 33 | 1.4.6 | Complete discipline-specific drawings and equipment list |  | 15d | 2004-03-18 | 2004-04-07 | 30, 24, 23, 18 | 0d |  | Discipline engineer; Project engineer; Drafter | 360h |
| 34 | 1.4.7 | Complete conceptual layout |  | 15d | 2004-03-18 | 2004-04-07 | 31, 24, 23, 18 | 0d |  | Drafter | 120h |
| 35 | 1.5 | **Conceptual Phase Completion** |  | 10d | 2004-04-08 | 2004-04-21 |  | 0d |  |  | 160h |
| 36 | 1.5.1 | Prepare conceptual scope and estimate for review |  | 5d | 2004-04-08 | 2004-04-14 | 25, 8, 9, 26, 32, 33, 34 | 0d |  | Project engineer; Cost engineer; Drafter | 120h |
| 37 | 1.5.2 | Evaluate business plan - rework as needed |  | 5d | 2004-04-15 | 2004-04-21 | 36 | 0d |  | Project sponsor | 40h |
| 38 | 1.5.3 | Conceptual phase complete | milestone | 0d | 2004-04-21 | 2004-04-21 | 37 | 0d |  |  |  |
| 39 | 2 | **Definition** |  | 85d | 2004-04-22 | 2004-08-18 |  | 0d |  |  | 2840h |
| 40 | 2.1 | **Planning and Control** |  | 15d | 2004-04-22 | 2004-05-12 |  | 0d |  |  | 320h |
| 41 | 2.1.1 | Review conceptual plan |  | 5d | 2004-04-22 | 2004-04-28 | 38 | 0d |  | Project sponsor; Project engineer | 80h |
| 42 | 2.1.2 | Update project staffing plan |  | 5d | 2004-04-22 | 2004-04-28 | 38 | 55d |  | Project engineer; Discipline engineer | 80h |
| 43 | 2.1.3 | Identify definition phase engineering deliverables |  | 5d | 2004-04-29 | 2004-05-05 | 41 | 15d | 0d | Project engineer; Discipline engineer | 80h |
| 44 | 2.1.4 | Develop project contingency and indirect cost factors |  | 5d | 2004-05-06 | 2004-05-12 | 43 | 45d |  | Project engineer; Cost engineer | 80h |
| 45 | 2.2 | **Scope Definition** |  | 45d | 2004-04-29 | 2004-06-30 |  | 0d |  |  | 760h |
| 46 | 2.2.1 | Review studies list |  | 5d | 2004-04-29 | 2004-05-05 | 41 | 0d |  | Project engineer; Discipline engineer | 80h |
| 47 | 2.2.2 | Provide design requirements |  | 5d | 2004-05-06 | 2004-05-12 | 43 | 15d |  | Discipline engineer | 40h |
| 48 | 2.2.3 | Establish vendor data requirements/equipment budgets |  | 10d | 2004-05-06 | 2004-05-19 | 46 | 0d |  | Project engineer; Discipline engineer | 160h |
| 49 | 2.2.4 | Define equipment specifications and list |  | 10d | 2004-05-20 | 2004-06-02 | 41, 48 | 0d |  | Project engineer; Discipline engineer | 160h |
| 50 | 2.2.5 | Generate piping and instrument drawing (PID) |  | 20d | 2004-06-03 | 2004-06-30 | 43, 48, 49 | 0d |  | Discipline engineer; Designer | 320h |

| ID | WBS | Task | Type | Duration | Start | Finish | Predecessors | Total slack | Free slack | Resources | Work |
| --- | --- | --- | --- | --- | --- | --- | --- | --- | --- | --- | --- |
| 51 | 2.3 | **Discipline Support** |  | 40d | 2004-05-06 | 2004-06-30 |  | 0d |  |  | 880h |
| 52 | 2.3.1 | Review regulatory agency requirements |  | 20d | 2004-05-06 | 2004-06-02 | 46 | 0d |  | Discipline engineer | 160h |
| 53 | 2.3.2 | Generate general arrangement and site plans |  | 20d | 2004-06-03 | 2004-06-30 | 47, 43, 48, 49 | 0d |  | Discipline engineer; Designer | 320h |
| 54 | 2.3.3 | Develop discipline specific control drawings, lists, specifications |  | 20d | 2004-06-03 | 2004-06-30 | 43, 52, 49 | 0d |  | Discipline engineer; Designer | 320h |
| 55 | 2.3.4 | Evaluate input on feasibility of construction input |  | 10d | 2004-06-17 | 2004-06-30 | 53SS+5%, 50SS+5%, 54SS+5% | 10d |  | Discipline engineer | 80h |
| 56 | 2.4 | **Definition Phase Completion** |  | 45d | 2004-06-17 | 2004-08-18 |  | 0d |  |  | 880h |
| 57 | 2.4.1 | Generate scope document (including infrastructure) |  | 20d | 2004-06-17 | 2004-07-14 | 53SS+5%, 50SS+5%, 54SS+5% | 0d |  | Project engineer; Discipline engineer | 320h |
| 58 | 2.4.2 | Generate project capital estimate |  | 15d | 2004-06-17 | 2004-07-07 | 53SS+5%, 50SS+5% | 5d |  | Cost engineer | 120h |
| 59 | 2.4.3 | Establish project schedule |  | 10d | 2004-06-17 | 2004-06-30 | 53SS+5%, 50SS+5% | 10d |  | Project engineer; Scheduler | 160h |
| 60 | 2.4.4 | Review definition, scope, and estimate |  | 5d | 2004-07-15 | 2004-07-21 | 57, 58, 59, 42, 48, 53, 44, 50, 55 | 0d |  | Project sponsor; Project engineer; Cost engineer | 120h |
| 61 | 2.4.5 | Scope complete/issue cost estimate | milestone | 0d | 2004-07-21 | 2004-07-21 | 60 | 0d |  |  |  |
| 62 | 2.4.6 | Appropriate project monies |  | 20d | 2004-07-22 | 2004-08-18 | 61 | 0d |  | Project sponsor | 160h |
| 63 | 2.4.7 | Project authorized | milestone | 0d | 2004-08-18 | 2004-08-18 | 62 | 0d |  |  |  |
| 64 | 3 | **Design** |  | 201.25d | 2004-08-19 | 2005-05-27 |  | 0d |  |  | 31880h |
| 65 | 3.1 | **Planning and Control** |  | 166d | 2004-08-19 | 2005-04-07 |  | 0d |  |  | 7520h |
| 66 | 3.1.1 | Review definition, scope and estimate |  | 1d | 2004-08-19 | 2004-08-19 | 63 | 0d |  | Project sponsor; Project engineer | 16h |
| 67 | 3.1.2 | Develop or update project procedures |  | 10d | 2004-08-20 | 2004-09-02 | 66 | 0d |  | Project engineer | 80h |
| 68 | 3.1.3 | Finalize design and construction schedule |  | 6d | 2004-08-20 | 2004-08-27 | 66 | 4d | 0d | Scheduler; Project engineer | 96h |
| 69 | 3.1.4 | Develop and manage issues list |  | 100d | 2004-08-20 | 2005-01-06 | 66 | 98.25d |  | Project engineer | 800h |
| 70 | 3.1.5 | Procure long delivery equipment |  | 133d | 2004-08-24 | 2005-02-24 | 84 | 58d | 30.5d | Project engineer | 1064h |
| 71 | 3.1.6 | Establish and implement procurement and contracting plan |  | 3d | 2004-08-25 | 2004-08-27 | 68SS+5%, 84 | 4d |  | Project sponsor; Project engineer | 48h |
| 72 | 3.1.7 | Plan and staff design phase |  | 3d | 2004-09-03 | 2004-09-07 | 66, 67 | 7.75d |  | Project engineer | 24h |
| 73 | 3.1.8 | Define engineering presentation and content for specifications and drawings |  | 3d | 2004-09-03 | 2004-09-07 | 68SS+5%, 67, 71 | 0d |  | Project engineer; Discipline engineer | 48h |
| 74 | 3.1.9 | Implement document control |  | 5d | 2004-09-03 | 2004-09-09 | 67 | 38.25d | 5d | Project engineer | 40h |
| 75 | 3.1.10 | Establish project monitoring |  | 5d | 2004-09-03 | 2004-09-09 | 67, 71 | 38.25d | 5d | Project engineer | 40h |
| 76 | 3.1.11 | Develop project cost control and earned value system |  | 10d | 2004-09-03 | 2004-09-16 | 66, 67 | 33.25d | 0d | Project engineer; Scheduler; Cost engineer | 240h |
| 77 | 3.1.12 | Finalize deliverables list |  | 10d | 2004-09-03 | 2004-09-17 | 66, 73SS+2.5%, 71 | 0d |  | Project engineer; Discipline engineer | 160h |
| 78 | 3.1.13 | Implement project reporting |  | 145d | 2004-09-17 | 2005-04-07 | 76, 67, 74, 75 | 33.25d |  | Project engineer | 1160h |
| 79 | 3.1.14 | Invoice approval/contract payments |  | 100d | 2004-10-01 | 2005-02-17 | 85 | 68.25d |  | Project engineer | 800h |
| 80 | 3.1.15 | Procure equipment |  | 123d | 2004-10-08 | 2005-03-29 | 85, 88SS+5% | 27.5d | 0d | Project engineer | 984h |
| 81 | 3.1.16 | Implement expediting including vendor drawings |  | 100d | 2004-10-08 | 2005-02-24 | 85, 88SS+5% | 63.25d |  | Project engineer; Scheduler | 1600h |
| 82 | 3.1.17 | Training start-up plan |  | 20d | 2005-02-09 | 2005-03-08 | 89 | 55.25d |  | Project engineer; Discipline engineer | 320h |

| ID | WBS | Task | Duration | Start | Finish | Predecessors | Total slack | Free slack | Resources | Work |
| --- | --- | --- | --- | --- | --- | --- | --- | --- | --- | --- |
| 83 | 3.2 | **Scope Refinement** | 123d | 2004-08-20 | 2005-02-08 |  | 5d |  |  | 2032h |
| 84 | 3.2.1 | Update project design criteria | 2d | 2004-08-20 | 2004-08-23 | 66 | 5d | 0d | Project engineer; Discipline engineer | 32h |
| 85 | 3.2.2 | Issue for design: equipment list | 30d | 2004-08-20 | 2004-09-30 | 66 | 27.5d | 0d | Discipline engineer | 240h |
| 86 | 3.2.3 | Issue for discipline design: piping and instrument drawings (PIDs) | 30d | 2004-09-08 | 2004-10-19 | 73 | 35.25d | 0d | Discipline engineer; Designer | 480h |
| 87 | 3.2.4 | Issue for discipline design: general arrangement drawings (GAs)/site plan | 30d | 2004-09-08 | 2004-10-19 | 73 | 35.25d | 0d | Discipline engineer; Designer | 480h |
| 88 | 3.2.5 | Equipment specification, bid, vendor selection | 40d | 2004-09-10 | 2004-11-04 | 73, 85SS+5% | 27.5d | 0d | Project engineer; Discipline engineer | 640h |
| 89 | 3.2.6 | Process equipment functional descriptions | 20d | 2005-01-12 | 2005-02-08 | 106SS+7.5% | 35.25d | 0d | Discipline engineer | 160h |
| 90 | 3.3 | **Discipline Support** | 200.25d | 2004-08-20 | 2005-05-27 |  | 0d |  |  | 22328h |
| 91 | 3.3.1 | Establish discipline governing code requirements | 2d | 2004-08-20 | 2004-08-23 | 66 | 18.75d |  | Discipline engineer | 16h |
| 92 | 3.3.2 | Review and finalize discipline standards and specifications | 5d | 2004-09-17 | 2004-09-24 | 73, 91, 72, 77 | 0d |  | Discipline engineer | 40h |
| 93 | 3.3.3 | **Start Discipline Design** | 55d | 2004-09-24 | 2004-12-10 |  | 0d |  |  | 3280h |
| 94 | 3.3.3.1 | Start architectural design | 25d | 2004-09-24 | 2004-10-29 | 92 | 0d |  | Discipline engineer; Designer | 400h |
| 95 | 3.3.3.2 | Start civil design | 30d | 2004-10-01 | 2004-11-12 | 94SS+5d | 0d |  | Discipline engineer; Designer | 480h |
| 96 | 3.3.3.3 | Start mechanical design | 30d | 2004-10-08 | 2004-11-19 | 95SS+5d | 0d |  | Discipline engineer; Designer | 480h |
| 97 | 3.3.3.4 | Start piping design | 30d | 2004-10-15 | 2004-11-26 | 96SS+5d | 0d |  | Discipline engineer; Designer | 480h |
| 98 | 3.3.3.5 | Start structural design | 30d | 2004-10-01 | 2004-11-12 | 94SS+5d | 20d |  | Discipline engineer; Designer | 480h |
| 99 | 3.3.3.6 | Start electrical design | 30d | 2004-10-22 | 2004-12-03 | 97SS+5d | 0d |  | Discipline engineer; Designer | 480h |
| 100 | 3.3.3.7 | Start instrumentation design | 30d | 2004-10-29 | 2004-12-10 | 99SS+5d | 0d |  | Discipline engineer; Designer | 480h |
| 101 | 3.3.4 | Implement first quality review | 5d | 2004-12-01 | 2004-12-08 | 94SS+7.5%, 95SS+7.5%, 96SS+7.5%, 97SS+7.5%, 98SS+7.5%, 99SS+7.5%, 100SS+7.5% | 0d |  | Discipline engineer | 40h |
| 102 | 3.3.5 | Vendor drawing review (all disciplines) | 60d | 2004-11-19 | 2005-02-11 | 80SS+2.5%, 70SS+2.5% | 27.5d | 0d | Discipline engineer | 480h |
| 103 | 3.3.6 | Vendor drawing certification (all disciplines) | 5d | 2005-02-11 | 2005-02-18 | 102 | 27.5d |  | Discipline engineer; Project engineer | 80h |
| 104 | 3.3.7 | Cross discipline engineering review | 5d | 2004-12-01 | 2004-12-08 | 94SS+7.5%, 95SS+7.5%, 96SS+7.5%, 97SS+7.5%, 98SS+7.5%, 99SS+7.5%, 100SS+7.5% | 0d |  | Discipline engineer; Designer | 80h |
| 105 | 3.3.8 | Complete equipment list | 90d | 2004-10-01 | 2005-02-03 | 85 | 38.25d |  | Discipline engineer; Project engineer | 1440h |
| 106 | 3.3.9 | Complete PIDs | 80d | 2004-10-20 | 2005-02-08 | 86 | 35.25d | 0d | Discipline engineer; Designer; Drafter | 1920h |
| 107 | 3.3.10 | Complete GAs/site plan | 80d | 2004-10-20 | 2005-02-08 | 87 | 35.25d |  | Discipline engineer; Designer; Drafter | 1920h |

Notes:
- 94: This task includes the following: / Renderings / Floor plans / Elevations / Finish schedule
- 95: This task includes the following: / Plot plan / Erosion / Grading / Underground pipe / Infrastructure
- 96: This task includes the following: / Tanks / Special equipment / HVAC / Material handling / Pumps
- 97: This task includes the following: / PIDs / Plans / Sections / ISOs / Fire / Plumbing / Hangers / Stress calculations / Pipe line list
- 98: This task includes the following: / Steel / Slabs / Equipment support / Foundations
- 99: This task includes the following: / Power plans / Motor control centers (MCCs) / Programmable logic controls (PLCs) / Ground / Lighting / Communication / Elementary
- 100: This task includes the following: / PIDs / Data sheets / Loops / Logics / Locations / Index

| ID | WBS | Task | Type | Duration | Start | Finish | Predecessors | Total slack | Free slack | Resources | Work |
| --- | --- | --- | --- | --- | --- | --- | --- | --- | --- | --- | --- |
| 108 | 3.3.11 | **Complete Discipline Design** |  | 80d | 2004-12-08 | 2005-03-30 |  | 0d |  |  | 12240h |
| 109 | 3.3.11.1 | Complete architectural design |  | 70d | 2004-12-08 | 2005-03-16 | 104, 87, 101 | 10d | 7.5d | Discipline engineer; Designer; Drafter | 1680h |
| 110 | 3.3.11.2 | Complete civil design |  | 70d | 2004-12-08 | 2005-03-16 | 104, 87, 101 | 10d |  | Discipline engineer; Designer; Drafter | 1680h |
| 111 | 3.3.11.3 | Complete mechanical design |  | 70d | 2004-12-08 | 2005-03-16 | 104, 87, 101 | 10d | 7.5d | Discipline engineer; Designer; Drafter | 1680h |
| 112 | 3.3.11.4 | Complete structural design |  | 70d | 2004-12-08 | 2005-03-16 | 104, 87, 101 | 10d | 7.5d | Discipline engineer; Designer; Drafter | 1680h |
| 113 | 3.3.11.5 | Complete piping design |  | 70d | 2004-12-08 | 2005-03-16 | 104, 86, 101 | 10d | 7.5d | Discipline engineer; Designer; Drafter | 1680h |
| 114 | 3.3.11.6 | Complete electrical design |  | 80d | 2004-12-08 | 2005-03-30 | 104, 86, 101 | 0d |  | Discipline engineer; Designer; Drafter | 1920h |
| 115 | 3.3.11.7 | Complete instrumentation design |  | 80d | 2004-12-08 | 2005-03-30 | 104, 86, 101 | 0d |  | Discipline engineer; Designer; Drafter | 1920h |
| 116 | 3.3.12 | Implement second quality review |  | 5d | 2005-03-02 | 2005-03-09 | 109SS+7.5%, 111SS+7.5%, 112SS+7.5%, 113SS+7.5%, 114SS+7.5% | 15d |  | Discipline engineer | 40h |
| 117 | 3.3.13 | Implement code compliance and safety reviews |  | 10d | 2005-03-02 | 2005-03-16 | 109SS+7.5%, 111SS+7.5%, 112SS+7.5%, 113SS+7.5%, 114SS+7.5% | 10d |  | Discipline engineer | 80h |
| 118 | 3.3.14 | **Design Phase Completion** |  | 42d | 2005-03-30 | 2005-05-27 |  | 0d |  |  | 672h |
| 119 | 3.3.14.1 | Check and redraft drawings and lists (all disciplines) |  | 15d | 2005-03-30 | 2005-04-20 | 109, 110, 111, 112, 113, 114, 115, 89, 103, 105, 106, 107, 116, 117 | 0d |  | Discipline engineer; Designer; Drafter | 360h |
| 120 | 3.3.14.2 | Produce permit drawings and code compliance calculations (all disciplines) |  | 5d | 2005-04-20 | 2005-04-27 | 119 | 0d |  | Discipline engineer; Project engineer | 80h |
| 121 | 3.3.14.3 | Issue engineering for permitting, bidding, and construction |  | 15d | 2005-04-27 | 2005-05-18 | 120 | 0d |  | Project engineer | 120h |
| 122 | 3.3.14.4 | Contractor selection/contract review |  | 5d | 2005-05-18 | 2005-05-25 | 121 | 0d |  | Discipline engineer; Project engineer | 80h |
| 123 | 3.3.14.5 | Project complete - close out report, issue drawings of record |  | 2d | 2005-05-25 | 2005-05-27 | 122, 69, 78, 80, 81, 79, 82, 70 | 0d |  | Project engineer; Project sponsor | 32h |
| 124 | 4 | **Construction** |  | 246d | 2005-05-27 | 2006-05-08 | 123 | 0d |  |  |  |
| 125 | 4.1 | Select construction contractor |  | 30d | 2005-05-27 | 2005-07-08 | 123 | 0d |  |  |  |
| 126 | 4.2 | Mobilize on site |  | 20d | 2005-07-08 | 2005-08-05 | 125 | 0d |  |  |  |
| 127 | 4.3 | Construction |  | 196d | 2005-08-05 | 2006-05-08 | 126 | 0d |  |  |  |
| 128 | 4.4 | Construction complete | milestone | 0d | 2006-05-08 | 2006-05-08 | 127 | 0d |  |  |  |
